# ЖК "Райдужний"

Schedule from MS Project, 2023-04-10 to 2027-04-13, costs in $.
KyivOblBud

## Calendars

- Standard: Mon-Fri 08:00-12:00, 13:00-17:00; Sat-Sun off.

## Resources

| Resource | Rate | Cost per use |
| --- | --- | --- |
| Експерт з будівельних робіт Костянтин | 40 |  |
| Адвокат Катерина | 30 |  |
| Стажер Олексій | 5 |  |
| Архітектор Джон | 30 |  |
| Архітектор Ольга | 30 |  |
| Архітектор Марина | 30 |  |
| Будівельники з буд. Агентства "Зевс" | 400 |  |
| Фінансист Анатолій | 15 |  |
| Бетон |  | 5 |
| Труби |  | 10 |
| Кран - дах |  | 5000 |
| Кран - стінові конструкції |  | 20000 |
| Лопата |  | 3 |
| Прораб Борис | 30 |  |
| Маркетолог Григорій С. | 10 |  |
| Маркетолог Андрій Н. | 10 |  |
| Папір |  |  |
| Місце на інтернет-бордах |  |  |
| Метал |  | 10 |
| Робітники КиївВодоКанал | 20 |  |
| Аудит Агентство "Коршун" | 45 |  |
| Комунальний Заклад "КиївКомБудТранс" | 20 |  |
| Гіпсокартон |  |  |
| Суха будівельна суміш |  | 2 |
| EPS |  | 15 |
| Ліхтар |  | 70 |
| Вікно |  | 20 |
| Цегла |  | 2 |
| Ескаватор |  | 10000 |

## Schedule

| ID | WBS | Task | Duration | Start | Finish | Predecessors | Total slack | Free slack | Constraint | Resources | Work | Cost |
| --- | --- | --- | --- | --- | --- | --- | --- | --- | --- | --- | --- | --- |
| 1 | 1 | **Побудова багатоквартирного будинку** | 1046.51d | 2023-04-10 | 2027-04-13 |  | 0d |  |  |  | 12444h | 1,905,945.49 |
| 2 | 1.1 | **Домовленість про земельну ділянку** | 35.05d | 2023-04-10 | 2023-05-29 |  | 941.46d | 0d |  |  | 344h | 7,253.33 |
| 3 | 1.1.1 | **Зробити дослідження щодо вільних ділянок** | 7d | 2023-04-10 | 2023-04-18 |  | 941.46d | 0d |  |  | 56h | 1,680 |
| 4 | 1.1.1.1 | Зустрітися з відповідальною людиною з земельного реєстру | 2d | 2023-04-10 | 2023-04-11 |  | 941.46d | 0d |  | Стажер Олексій | 16h | 80 |
| 5 | 1.1.1.2 | Визначити список критеріїв для вибору ділянки | 5d | 2023-04-12 | 2023-04-18 | 4 | 941.46d | 0d |  | Експерт з будівельних робіт Костянтин | 40h | 1,600 |
| 6 | 1.1.2 | **Вибір ділянки** | 10d | 2023-04-19 | 2023-05-02 | 3 | 941.46d | 0d |  |  | 80h | 2,000 |
| 7 | 1.1.2.1 | Виходячи з критеріїв, відсіяти непідходящі ділянки | 2d | 2023-04-19 | 2023-04-20 | 5 | 941.46d | 0d |  | Експерт з будівельних робіт Костянтин | 16h | 640 |
| 8 | 1.1.2.2 | Визначити приблизний прибуток для кожної з ділянок | 4d | 2023-04-21 | 2023-04-26 | 7 | 941.46d | 0d |  | Фінансист Анатолій | 32h | 480 |
| 9 | 1.1.2.3 | Визначити ділянку для покупки | 4d | 2023-04-27 | 2023-05-02 | 8 | 941.46d |  |  | Експерт з будівельних робіт Костянтин [50%]; Фінансист Анатолій [50%] | 32h | 880 |
| 10 | 1.1.3 | **Домовитись з МіськРадою щодо вільної ділянки** | 18.05d | 2023-05-03 | 2023-05-29 | 6 | 941.46d | 30d |  |  | 208h | 3,573.33 |
| 11 | 1.1.3.1 | Отримати довідку про стан розмежування земельної ділянки | 8d | 2023-05-03 | 2023-05-12 |  | 941.46d | 0d |  | Стажер Олексій | 64h | 320 |
| 12 | 1.1.3.2 | Отримати витяг з місцевого реєстру речових прав на нерухоме майно | 8d | 2023-05-03 | 2023-05-12 | 11SS | 941.46d | 0d |  | Адвокат Катерина | 64h | 1,920 |
| 13 | 1.1.3.3 | Подати заяву щодо обраної ділянки | 5.05d | 2023-05-15 | 2023-05-22 | 11, 12 | 941.46d | 0d |  | Адвокат Катерина [33%]; Експерт з будівельних робіт Костянтин [33%]; Фінансист Анатолій [34%] | 40h | 1,133.33 |
| 14 | 1.1.3.4 | Забрати рішення МіськРади та зробити звіт | 5d | 2023-05-22 | 2023-05-29 | 13 | 941.46d |  |  | Стажер Олексій | 40h | 200 |
| 15 | 1.2 | **Пошук грошей** | 70d | 2023-05-29 | 2023-09-04 | 2 | 941.46d |  |  |  | 1120h | 27,200 |
| 16 | 1.2.1 | Пошук можливих зарубіжних інвесторів | 30d | 2023-05-29 | 2023-07-10 |  | 941.46d | 0d |  | Маркетолог Андрій Н. | 240h | 2,400 |
| 17 | 1.2.2 | Переговори про можливе часткове фінансування з державних коштів | 30d | 2023-07-10 | 2023-08-21 | 16 | 951.46d |  |  | Маркетолог Григорій С. | 240h | 2,400 |
| 18 | 1.2.3 | **Зконтактувати з інвестиційним фондом** | 40d | 2023-07-10 | 2023-09-04 | 10, 16 | 941.46d |  |  |  | 640h | 22,400 |
| 19 | 1.2.3.1 | Переговори з менеджментом інвестиційного фонду "BLTO" | 40d | 2023-07-10 | 2023-09-04 | 20SF | 941.46d |  |  | Адвокат Катерина [50%]; Експерт з будівельних робіт Костянтин [50%] | 320h | 11,200 |
| 20 | 1.2.3.2 | Переговори з менеджментом інвестиційного фонду "CapiFund" | 40d | 2023-07-10 | 2023-09-04 |  | 941.46d | 40d | start no earlier than 2023-06-02 | Адвокат Катерина [50%]; Експерт з будівельних робіт Костянтин [50%] | 320h | 11,200 |
| 21 | 1.3 | **Проектування** | 90d | 2023-09-05 | 2024-01-08 |  |  |  |  |  | 2240h | 72,288 |
| 22 | 1.3.1 | **План будинку** | 90d | 2023-09-05 | 2024-01-08 |  | 0d |  |  |  | 1920h | 61,632 |
| 23 | 1.3.1.1 | План 1-5 поверхів | 90d | 2023-09-05 | 2024-01-08 |  | 0d |  |  | Архітектор Джон [33%]; Архітектор Марина [33%]; Архітектор Ольга [34%] | 720h | 21,600 |
| 24 | 1.3.1.2 | План 5-8 поверхів | 90d | 2023-09-05 | 2024-01-08 |  | 0d |  |  | Архітектор Ольга [33%]; Архітектор Джон [33%]; Експерт з будівельних робіт Костянтин [34%] | 720h | 24,048 |
| 25 | 1.3.1.3 | План комунікацій | 60d | 2023-09-05 | 2023-11-27 |  | 30d |  |  | Архітектор Джон [34%]; Архітектор Марина [33%]; Експерт з будівельних робіт Костянтин [33%] | 480h | 15,984 |
| 26 | 1.3.2 | План прибудинкових споруд | 40d | 2023-09-05 | 2023-10-30 |  | 50d |  |  | Експерт з будівельних робіт Костянтин [33%]; Архітектор Ольга [33%]; Архітектор Марина [34%] | 320h | 10,656 |

| ID | WBS | Task | Duration | Start | Finish | Predecessors | Total slack | Constraint | Resources | Work | Cost |
| --- | --- | --- | --- | --- | --- | --- | --- | --- | --- | --- | --- |
| 27 | 1.4 | **Будівництво** | 575.51d | 2024-01-09 | 2026-03-24 | 21 | 0d |  |  | 5048h | 1,683,044.15 |
| 28 | 1.4.1 | Підготовчі роботи (видалення рослинності, земляні роботи) | 20.51d | 2024-01-09 | 2024-02-06 |  | 0d |  | Будівельники з буд. Агентства "Зевс" [90%]; Прораб Борис [10%]; Лопата [1000%]; Ескаватор | 160h | 69,449.15 |
| 29 | 1.4.2 | Фундамент | 18d | 2024-02-06 | 2024-03-01 | 28 | 0d |  | Бетон [100000%]; Будівельники з буд. Агентства "Зевс" | 144h | 57,605 |
| 30 | 1.4.3 | Стінові конструкції | 210d | 2024-03-08 | 2024-12-27 | 29FS+5d | 0d |  | Прораб Борис [10%]; Будівельники з буд. Агентства "Зевс" [90%]; Метал; Бетон [500000%]; Кран - стінові конструкції | 1680h | 629,855 |
| 31 | 1.4.4 | Конструкції даху | 90d | 2024-12-27 | 2025-05-02 | 30 | 0d |  | Кран - дах; Метал [400000%]; Будівельники з буд. Агентства "Зевс" [95%]; Прораб Борис [2%]; Експерт з будівельних робіт Костянтин [3%] | 720h | 279,906 |
| 32 | 1.4.5 | **Інженерні системи** | 67d | 2025-05-02 | 2025-08-05 | 31 | 0d |  |  | 1024h | 118,120 |
| 33 | 1.4.5.1 | Водовідведення (каналізація) | 30d | 2025-05-02 | 2025-06-13 |  | 0d |  | Робітники КиївВодоКанал; Труби [100000%] | 240h | 4,810 |
| 34 | 1.4.5.2 | Водопостачання | 37d | 2025-06-13 | 2025-08-05 | 33 | 0d |  | Робітники КиївВодоКанал; Труби [100000%] | 296h | 5,930 |
| 35 | 1.4.5.3 | Вентиляція | 30d | 2025-05-02 | 2025-06-13 |  | 37d |  | Експерт з будівельних робіт Костянтин [50%]; Будівельники з буд. Агентства "Зевс" [50%]; Труби [200000%] | 240h | 52,810 |
| 36 | 1.4.5.4 | Опалення | 31d | 2025-05-02 | 2025-06-16 |  | 36d |  | Будівельники з буд. Агентства "Зевс" [50%]; Експерт з будівельних робіт Костянтин [50%]; Труби [140000%] | 248h | 54,570 |
| 37 | 1.4.6 | **Внутрішні роботи** | 60d | 2025-08-05 | 2025-10-28 | 32 | 0d |  |  | 480h | 192,017 |
| 38 | 1.4.6.1 | Штукатурка стін | 30d | 2025-08-05 | 2025-09-16 |  | 0d |  | Будівельники з буд. Агентства "Зевс"; Суха будівельна суміш [20000%] | 240h | 96,002 |
| 39 | 1.4.6.2 | Утеплення підлоги | 30d | 2025-09-16 | 2025-10-28 | 38 | 0d |  | Будівельники з буд. Агентства "Зевс"; EPS [40000%] | 240h | 96,015 |
| 40 | 1.4.7 | **Зовнішні роботи** | 105d | 2025-10-28 | 2026-03-24 | 37 | 0d |  |  | 840h | 336,092 |
| 41 | 1.4.7.1 | Встановлення систем освітлення | 25d | 2025-10-28 | 2025-12-02 |  | 0d |  | Будівельники з буд. Агентства "Зевс"; Ліхтар [3000%] | 200h | 80,070 |
| 42 | 1.4.7.2 | Встановлення вікон | 40d | 2025-12-02 | 2026-01-27 | 41 | 0d |  | Будівельники з буд. Агентства "Зевс"; Вікно [40000%] | 320h | 128,020 |
| 43 | 1.4.7.3 | Облицювання фасаду | 40d | 2026-01-27 | 2026-03-24 | 42 | 0d |  | Будівельники з буд. Агентства "Зевс"; Цегла [400000%] | 320h | 128,002 |
| 44 | 1.5 | **Прорекламувати ЖК** | 180d | 2026-03-24 | 2026-12-01 | 27 | 0d |  |  | 2812h | 27,560 |
| 45 | 1.5.1 | Реклама в метро | 180d | 2026-03-24 | 2026-12-01 | 46FF | 0d |  | Маркетолог Андрій Н.; Папір [100000%]; Місце на інтернет-бордах [3000%] | 1440h | 14,400 |
| 46 | 1.5.2 | Зібрати метрики щодо реклами в метро | 7d | 2026-03-24 | 2026-04-13 |  | 166.49d | start no earlier than 2023-06-14 | Стажер Олексій | 56h | 280 |
| 47 | 1.5.3 | Реклама в інтернеті | 180d | 2026-03-24 | 2026-12-01 | 45SS, 48FF | 0d |  | Маркетолог Григорій С. [87.5%] | 1260h | 12,600 |
| 48 | 1.5.4 | Зібрати метрики щодо реклами в інтернеті | 7d | 2026-03-24 | 2026-04-02 |  | 173d | start no earlier than 2023-06-29 | Стажер Олексій | 56h | 280 |
| 49 | 1.6 | **ПІдготовка до заселення** | 95d | 2026-12-01 | 2027-04-13 | 44 | 0d |  |  | 880h | 88,600 |
| 50 | 1.6.1 | **Проходження технічного огляду** | 45d | 2026-12-01 | 2027-02-02 |  | 0d |  |  | 360h | 15,000 |
| 51 | 1.6.1.1 | Технічний огляд | 30d | 2026-12-01 | 2027-01-12 |  | 0d |  | Аудит Агентство "Коршун" | 240h | 10,800 |
| 52 | 1.6.1.2 | Отримання дозволу | 15d | 2027-01-12 | 2027-02-02 | 51 | 0d |  | Адвокат Катерина [50%]; Експерт з будівельних робіт Костянтин [50%] | 120h | 4,200 |
| 53 | 1.6.2 | Встановлення систем безпеки | 20d | 2027-02-02 | 2027-03-02 | 50 | 0d |  | Будівельники з буд. Агентства "Зевс" | 160h | 64,000 |
| 54 | 1.6.3 | Роботи з благоустрою території | 15d | 2026-12-01 | 2026-12-22 |  | 50d |  | Комунальний Заклад "КиївКомБудТранс" | 120h | 2,400 |
| 55 | 1.6.4 | Підписання договору про виконані роботи з мешканцями | 30d | 2027-03-02 | 2027-04-13 | 50, 53, 54 | 0d |  | Адвокат Катерина | 240h | 7,200 |
