# ЖК "Райдужний"

Schedule from MS Project, 2023-04-10 to 2026-05-13, costs in $.
KyivOblBud

## Calendars

- Standard: Mon-Fri 08:00-12:00, 13:00-17:00; Sat-Sun off.

## Resources

| Resource | Rate | Cost per use |
| --- | --- | --- |
| Адвокат Богдан Б. | 30 |  |
| Спеціаліст з буд. Робіт Олексій Ц. | 25 |  |
| Інженер Карина | 35 |  |
| Інженер Дарина | 35 |  |
| Інженер Марина | 35 |  |
| Будівельники | 500 |  |
| Фінансист Петро | 15 |  |
| Бетон |  | 5 |
| Труби |  | 10 |
| Кран |  | 20000 |
| Лопата |  | 3 |
| Прораб Микола | 35 |  |
| Маркетолог Юрій | 15 |  |
| Маркетолог Вероніка | 15 |  |
| Метал |  | 10 |
| Робітники КиївВодоКанал | 20 |  |
| Агентство тех. Перевірок | 30 |  |
| Лампа |  | 15 |
| Вікно |  | 15 |
| Менеджер Олексій | 10 | 25 |
| Фінансист Христина | 15 | 25 |
| Спеціаліст з Буд. Робіт Ярослав | 30 |  |

## Schedule

| ID | WBS | Task | Duration | Start | Finish | Predecessors | Total slack | Free slack | Constraint | Resources | Work | Cost |
| --- | --- | --- | --- | --- | --- | --- | --- | --- | --- | --- | --- | --- |
| 2 | 1 | **Побудова заводу "Рошен"** | 807.47d | 2023-04-10 | 2026-05-13 |  | 0d |  |  |  | 9996h | 2,151,302.23 |
| 3 | 1.1 | **Пошук грошей** | 49d | 2023-04-10 | 2023-06-15 |  | 15d | 0d |  |  | 1088h | 17,942.5 |
| 4 | 1.1.1 | **Державні позики** | 44d | 2023-04-10 | 2023-06-08 |  | 646.47d |  |  |  | 352h | 5,012.5 |
| 5 | 1.1.1.1 | Знайти можливості для взяття позики за низькою відсотковою ставкою | 30d | 2023-04-10 | 2023-05-19 |  | 646.47d | 0d |  | Фінансист Петро | 240h | 3,600 |
| 6 | 1.1.1.2 | У випадку успіху, оформити бізнес-план та надати реєстраційні документи для отримання позики | 14d | 2023-05-22 | 2023-06-08 | 5 | 646.47d |  |  | Фінансист Петро [50%]; Менеджер Олексій [50%] | 112h | 1,412.5 |
| 7 | 1.1.2 | **Інвестиційні фонди** | 49d | 2023-04-10 | 2023-06-15 |  | 0d |  |  |  | 736h | 12,930 |
| 8 | 1.1.2.1 | Створити список інвестиційних фондів для першого контакту | 20d | 2023-04-10 | 2023-05-05 |  | 28.53d |  |  | Фінансист Христина | 160h | 2,425 |
| 9 | 1.1.2.2 | Підготувати 10-хвилинний пітч | 10d | 2023-06-02 | 2023-06-15 |  | -0.47d | 0d | start no earlier than 2023-06-02 | Маркетолог Вероніка [50%]; Маркетолог Юрій [50%] | 80h | 1,200 |
| 10 | 1.1.2.3 | Провести зустрічі з менеджментом фондів для потенційної співпраці | 14d | 2023-04-10 | 2023-04-27 |  | 14.53d | 0d |  | Маркетолог Вероніка; Маркетолог Юрій; Менеджер Олексій | 336h | 4,505 |
| 11 | 1.1.2.4 | Підготувати документи для легального отримання інвестицій | 20d | 2023-04-28 | 2023-05-25 | 10 | 14.53d |  |  | Адвокат Богдан Б. | 160h | 4,800 |
| 12 | 1.2 | **Визначити земельну ділянку для покупки** | 37d | 2023-06-16 | 2023-08-07 | 3 | 641.47d |  |  |  | 328h | 8,025 |
| 13 | 1.2.1 | **Вибрати земельну ділянку для побудови заводу** | 27d | 2023-06-16 | 2023-07-24 |  | 641.47d | 0d |  |  | 184h | 4,025 |
| 14 | 1.2.1.1 | Зробити список вільних ділянок | 20d | 2023-06-16 | 2023-07-13 |  | 641.47d | 0d |  | Спеціаліст з буд. Робіт Олексій Ц. [25%] | 40h | 1,000 |
| 15 | 1.2.1.2 | Відсортувати ділянки за критеріями доступності ресурсів, транспортної інфраструктури та розміщенням конкуретнів | 5d | 2023-07-14 | 2023-07-20 | 14 | 641.47d | 0d |  | Менеджер Олексій; Спеціаліст з буд. Робіт Олексій Ц. | 80h | 1,425 |
| 16 | 1.2.1.3 | Зробити список з топ-3 ділянок | 2d | 2023-07-21 | 2023-07-24 | 15 | 641.47d |  |  | Спеціаліст з буд. Робіт Олексій Ц. | 16h | 400 |
| 17 | 1.2.1.4 | Визначити ділянку для покупки | 4d | 2023-06-16 | 2023-06-21 |  | 664.47d |  |  | Фінансист Петро [50%]; Спеціаліст з Буд. Робіт Ярослав | 48h | 1,200 |
| 18 | 1.2.2 | **Купівля ділянки** | 10d | 2023-07-25 | 2023-08-07 | 13 | 641.47d | 0d |  |  | 144h | 4,000 |
| 19 | 1.2.2.1 | Отримати дозвіл на покупки ділянки | 8d | 2023-07-25 | 2023-08-03 |  | 641.47d | 0d |  | Спеціаліст з буд. Робіт Олексій Ц. | 64h | 1,600 |
| 20 | 1.2.2.2 | Укласти договір купівлі-продажу з власником | 8d | 2023-07-25 | 2023-08-03 |  | 641.47d | 0d |  | Адвокат Богдан Б. | 64h | 1,920 |
| 21 | 1.2.2.3 | Оформити право власності на земельну ділянку у відповідному органі влади | 2d | 2023-08-04 | 2023-08-07 | 19, 20 | 641.47d |  |  | Адвокат Богдан Б. | 16h | 480 |
| 22 | 1.3 | **Нормативно-правові документи** | 80d | 2023-08-08 | 2023-11-27 | 18 | 641.47d |  |  |  | 640h | 19,200 |
| 23 | 1.3.1 | Отримати дозвіл на використання водних ресурсів | 30d | 2023-08-08 | 2023-09-18 |  | 641.47d | 0d |  | Адвокат Богдан Б. | 240h | 7,200 |
| 24 | 1.3.2 | Отримати дозвіл на будівництво | 30d | 2023-09-19 | 2023-10-30 | 23 | 641.47d | 0d |  | Адвокат Богдан Б. | 240h | 7,200 |
| 25 | 1.3.3 | Отримати дозвіл на викиди в атмосферу | 20d | 2023-10-31 | 2023-11-27 | 24 | 641.47d |  |  | Адвокат Богдан Б. | 160h | 4,800 |

| ID | WBS | Task | Duration | Start | Finish | Predecessors | Total slack | Free slack | Resources | Work | Cost |
| --- | --- | --- | --- | --- | --- | --- | --- | --- | --- | --- | --- |
| 26 | 1.4 | **Проектування** | 200d | 2023-06-16 | 2024-03-21 | 7 | 0d |  |  | 3334.4h | 116,704 |
| 27 | 1.4.1 | **План заводу** | 160d | 2023-06-16 | 2024-01-25 |  | 0d |  |  | 2800h | 98,000 |
| 28 | 1.4.1.1 | **Секція виробництва шоколаду та кондитерських виробів** | 50d | 2023-06-16 | 2023-08-24 |  | 0d |  |  | 1200h | 42,000 |
| 29 | 1.4.1.1.1 | Секція для розчинення та перемішування шоколаду | 50d | 2023-06-16 | 2023-08-24 |  | -0.47d | 0d | Інженер Дарина | 400h | 14,000 |
| 30 | 1.4.1.1.2 | Секція для темперування та перемішування шоколаду | 50d | 2023-06-16 | 2023-08-24 | 29SS | -0.47d | 0d | Інженер Карина | 400h | 14,000 |
| 31 | 1.4.1.1.3 | Секція виробництва батончиків та снеків | 50d | 2023-06-16 | 2023-08-24 | 30FF | -0.47d | 0d | Інженер Марина | 400h | 14,000 |
| 32 | 1.4.1.2 | **Секція упакування та логістики** | 50d | 2023-08-25 | 2023-11-02 | 28 | 0d |  |  | 800h | 28,000 |
| 33 | 1.4.1.2.1 | Відділ упакування готової продукції | 50d | 2023-08-25 | 2023-11-02 |  | -0.47d | 0d | Інженер Дарина | 400h | 14,000 |
| 34 | 1.4.1.2.2 | Складські приміщення | 50d | 2023-08-25 | 2023-11-02 |  | -0.47d | 0d | Інженер Марина | 400h | 14,000 |
| 35 | 1.4.1.3 | **Секція якості та контролю** | 60d | 2023-11-03 | 2024-01-25 | 32 | 0d |  |  | 800h | 28,000 |
| 36 | 1.4.1.3.1 | Лабораторії для контролю якості нових продуктів | 40d | 2023-11-03 | 2023-12-28 |  | 19.53d |  | Інженер Карина | 320h | 11,200 |
| 37 | 1.4.1.3.2 | Система для автоматизації контролю якості існуючих продуктів | 60d | 2023-11-03 | 2024-01-25 | 36SF | -0.47d | 0d | Інженер Дарина | 480h | 16,800 |
| 38 | 1.4.2 | Фінальна ревізія плану заводу | 40d | 2024-01-26 | 2024-03-21 | 35 | -0.47d | 0d | Інженер Дарина; Інженер Марина; Інженер Карина | 534.4h | 18,704 |
| 39 | 1.5 | **Будівництво** | 493.47d | 2024-03-22 | 2026-02-11 | 26 | 0d |  |  | 4145.6h | 1,900,430.73 |
| 40 | 1.5.1 | Підготовка будівельного майданчику | 20.47d | 2024-03-22 | 2024-04-19 |  | -0.47d | 0d | Будівельники [90%]; Прораб Микола [10%]; Лопата [20000%] | 160h | 74,144.73 |
| 41 | 1.5.2 | Виконання земляних робіт | 20d | 2024-04-19 | 2024-05-17 | 40 | -0.47d | 0d | Будівельники | 160h | 80,000 |
| 42 | 1.5.3 | Фундамент | 25d | 2024-05-17 | 2024-06-21 | 41 | -0.47d | 0d | Бетон [100000%]; Будівельники | 200h | 100,005 |
| 43 | 1.5.4 | Монтаж складських приміщень | 180d | 2024-06-26 | 2025-03-05 | 42FS+3d | -0.47d | 0d | Прораб Микола [10%]; Будівельники [90%]; Метал; Бетон [500000%]; Кран | 1440h | 673,055 |
| 44 | 1.5.5 | **Монтаж виробничих цехів** | 60d | 2025-03-05 | 2025-05-28 | 43 | 0d |  |  | 480h | 240,010 |
| 45 | 1.5.5.1 | Монтаж металевих конструкцій | 30d | 2025-03-05 | 2025-04-16 |  | -0.47d | 0d | Будівельники; Метал | 240h | 120,010 |
| 46 | 1.5.5.2 | Підготовка та облаштування робочих приміщень | 30d | 2025-04-16 | 2025-05-28 | 45 | -0.47d | 0d | Будівельники | 240h | 120,000 |
| 47 | 1.5.6 | **Інженерні системи** | 60d | 2025-05-28 | 2025-08-20 | 44 | 0d |  |  | 720h | 244,840 |
| 48 | 1.5.6.1 | Монтаж водопровідних трубопроводів | 30d | 2025-05-28 | 2025-07-09 |  | -0.47d | 0d | Робітники КиївВодоКанал; Труби [100000%] | 240h | 4,810 |
| 49 | 1.5.6.2 | Монтаж електричних мереж | 30d | 2025-05-28 | 2025-07-09 |  | 29.53d |  | Будівельники [50%]; Труби [200000%] | 120h | 60,010 |
| 50 | 1.5.6.3 | Монтаж систем опалення | 30d | 2025-05-28 | 2025-07-09 |  | 29.53d |  | Будівельники [50%]; Труби [140000%] | 120h | 60,010 |
| 51 | 1.5.6.4 | Монтаж систем кондиціонування повітря | 30d | 2025-07-09 | 2025-08-20 | 48 | -0.47d | 0d | Труби [100000%]; Будівельники | 240h | 120,010 |
| 52 | 1.5.7 | Монтаж обладнання | 60d | 2025-08-20 | 2025-11-12 | 44, 47 | -0.47d | 0d | Метал [400000%]; Будівельники [95%]; Прораб Микола [5%] | 465.6h | 228,346 |

| ID | WBS | Task | Type | Duration | Start | Finish | Predecessors | Total slack | Free slack | Deadline | Resources | Work | Cost |
| --- | --- | --- | --- | --- | --- | --- | --- | --- | --- | --- | --- | --- | --- |
| 53 | 1.5.8 | **Зовнішні роботи** |  | 65d | 2025-11-12 | 2026-02-11 | 52 | 0d |  |  |  | 520h | 260,030 |
| 54 | 1.5.8.1 | Встановлення вікон |  | 40d | 2025-12-17 | 2026-02-11 | 55 | -0.47d | 0d |  | Будівельники; Вікно [100000%] | 320h | 160,015 |
| 55 | 1.5.8.2 | Встановлення систем освітлення |  | 25d | 2025-11-12 | 2025-12-17 |  | -0.47d | 0d |  | Будівельники; Лампа [150000%] | 200h | 100,015 |
| 56 | 1.6 | **Пдготовка до запуску виробництва** |  | 65d | 2026-02-11 | 2026-05-13 | 39 | 0d |  |  |  | 460h | 89,000 |
| 57 | 1.6.1 | Встановлення систем безпеки |  | 20d | 2026-02-11 | 2026-03-11 |  | 0d |  |  | Будівельники | 160h | 80,000 |
| 58 | 1.6.2 | **Проходження аудиту** |  | 45d | 2026-03-11 | 2026-05-13 | 57 | 0d |  |  |  | 300h | 9,000 |
| 59 | 1.6.2.1 | Аудит заводу |  | 30d | 2026-03-11 | 2026-04-22 |  | 0d |  |  | Агентство тех. Перевірок | 240h | 7,200 |
| 60 | 1.6.2.2 | Отримання дозволу на початок вирабоництва |  | 15d | 2026-04-22 | 2026-05-13 | 59 | 0d |  |  | Адвокат Богдан Б. [50%] | 60h | 1,800 |
| 61 | 1.6.3 | Початок виробництва | milestone, manual | 0d | 2026-02-11 | 2026-02-11 |  |  |  | 2023-07-15 |  |  |  |
